# ProvoDashboard

How a schedule from MS Project changed from version to version. A marks actual dates.

## Version 1 (saved 2015-01-27)

Note of the change: Merge branch 'master' into dev

| ID | WBS | Task | Duration | Start | Finish | Predecessors | Complete | Constraint |
| --- | --- | --- | --- | --- | --- | --- | --- | --- |
| 1 |  | Access to Server | 1d | 2015-01-08 A | 2015-01-08 A |  | 100% |  |
| 2 |  | Database Design | 4d | 2014-10-09 A | 2014-10-14 A | 1 | 100% |  |
| 3 |  | Input Form questions | 3d | 2014-09-09 A | 2014-09-11 A |  | 100% |  |
| 4 |  | Development Envrioments created | 7d | 2014-09-30 A | 2014-10-08 A |  | 100% |  |
| 5 |  | Version Control created and accessile | 2d | 2014-09-30 A | 2014-10-01 A |  | 100% |  |
| 6 |  | U.I design of layouts created | 14d | 2014-10-09 A | 2014-10-28 A | 4 | 100% |  |
| 7 |  | U.I design intergration | 14d | 2014-10-09 A | 2014-10-28 A | 4 | 100% |  |
| 8 |  | Homepage | 7d | 2014-10-24 A | 2014-11-03 A |  | 100% |  |
| 9 |  | Category page template | 7d | 2014-10-29 A | 2014-11-06 A | 6 | 100% |  |
| 10 |  | Graph Integration | 7d | 2014-10-29 A | 2014-11-06 A | 6 | 100% |  |
| 11 |  | Graphs display data from database correctly | 7d | 2014-10-15 A | 2014-10-23 A | 2 | 100% |  |
| 12 |  | Input forms for continual data gathering | 14d | 2014-10-15 A | 2014-11-03 A | 2 | 100% |  |
| 13 |  | Input forms correctly save data to database | 7d | 2014-11-04 A | 2014-11-12 A | 12 | 100% |  |
| 14 |  | New database data is viewable to website | 14d | 2014-11-13 A | 2014-12-02 A | 13 | 100% |  |
| 15 |  | Modals for individual category graph displays | 14d | 2014-12-02 A | 2014-12-19 A |  | 100% |  |
| 16 |  | Update Project Plan | 5d | 2015-01-06 A | 2015-01-12 A |  | 100% |  |
| 17 | 17 | **update dashboard page layout** | 11d | 2015-01-06 A | 2015-01-20 A |  | 100% |  |
| 18 |  | add header | 10d | 2015-01-06 A | 2015-01-19 A |  | 100% | start no earlier than 2015-01-06 |
| 19 |  | center divs | 10d | 2015-01-06 A | 2015-01-19 A |  | 100% | start no earlier than 2015-01-06 |
| 20 |  | add text blocks | 10d | 2015-01-06 A | 2015-01-19 A |  | 100% | start no earlier than 2015-01-06 |
| 21 |  | change column sizes | 10d | 2015-01-06 A | 2015-01-19 A |  | 100% | start no earlier than 2015-01-06 |
| 22 | 18 | **change categories** | 11d | 2015-01-06 A | 2015-01-20 A |  | 100% |  |
| 23 |  | add icons | 10d | 2015-01-06 A | 2015-01-19 A |  | 100% |  |
| 24 | 19 | **Data base categories** | 11d | 2015-01-20 | 2015-02-03 |  |  |  |
| 25 |  | Dynamic Scripting of categories | 5d | 2015-01-27 | 2015-02-02 |  |  |  |
| 26 | 20 | **sub category pages** | 14d | 2015-01-21 | 2015-02-09 | 17 |  |  |
| 27 |  | Create new pages from categories | 5d | 2015-01-21 | 2015-01-27 |  |  |  |
| 28 |  | Attach graphs based on feedback | 5d | 2015-01-28 | 2015-02-03 |  |  |  |
| 29 |  | Test custom date ranges | 5d | 2015-02-03 | 2015-02-09 |  |  |  |
| 30 |  | drill down page layouts and template | 14d | 2015-01-21 | 2015-02-09 | 17 |  |  |
| 31 |  | WATER LINE | 1d | 2015-01-08 A | 2015-01-08 |  |  |  |
| 32 |  | Create Administraiton Page | 5d | 2015-01-20 | 2015-01-26 |  |  |  |
| 33 | 24 | **Add Permissions** | 11d | 2015-02-10 | 2015-02-24 | 23 |  |  |
| 34 |  | Define and set Admin permissions | 7d | 2015-02-10 | 2015-02-18 |  |  |  |
| 35 |  | Define and Set User Permission | 5d | 2015-02-17 | 2015-02-23 |  |  |  |
| 36 | 25 | **data input page** | 16d | 2015-02-09 | 2015-03-02 |  |  |  |
| 37 |  | Create Data input page | 4d | 2015-02-09 | 2015-02-12 |  |  |  |
| 38 |  | Create User Friendly Input fields | 4d | 2015-02-13 | 2015-02-18 |  |  |  |
| 39 |  | Test Category Data input | 4d | 2015-02-19 | 2015-02-24 |  |  |  |
| 40 |  | add batch import | 4d | 2015-02-25 | 2015-03-02 |  |  |  |
| 41 |  | Test batch import | 4d | 2015-02-25 | 2015-03-02 |  |  |  |
| 42 |  | SQL Injection checks | 4d | 2015-02-19 | 2015-02-24 |  |  |  |
| 43 |  | Data Validation | 4d | 2015-02-25 | 2015-03-02 |  |  |  |
| 44 |  | Exception Handleing | 4d | 2015-02-13 | 2015-02-18 |  |  |  |
| 45 | 26 | **Create New Category and Graphs** | 28d | 2015-02-26 | 2015-04-06 |  |  |  |
| 46 |  | Create Category Page | 5d | 2015-02-25 | 2015-03-03 |  |  |  |
| 47 |  | data input for new category | 7d | 2015-03-04 | 2015-03-12 | 46 |  |  |
| 48 |  | create category in database | 7d | 2015-03-13 | 2015-03-23 | 47 |  |  |
| 49 |  | render new category graphs and pages | 7d | 2015-03-24 | 2015-04-01 | 48 |  |  |
| 50 |  | improve admin page | 21d | 2015-02-26 | 2015-03-26 |  |  |  |
| 51 |  | admin styling | 14d | 2015-03-30 | 2015-04-16 |  |  |  |
| 52 |  | improve input interface | 14d | 2015-03-30 | 2015-04-16 |  |  |  |
| 53 |  | User Testing | 10d | 2015-04-16 | 2015-04-29 |  |  |  |

## Version 2 (saved 2015-02-10)

Note of the change: updated project plan

Last finish stays 2015-04-29. Complete tasks 21 → 23.

Changed:

| ID | Task | Start | Finish | Duration | Complete | Predecessors | Other |
| --- | --- | --- | --- | --- | --- | --- | --- |
| 24 | **Data base categories** | 2015-01-20 A |  |  | 0% → 75% |  |  |
| 25 | Dynamic Scripting of categories | 2015-01-27 A |  |  | 0% → 75% |  | resources Colton → Colton; Ikani |
| 26 | Create Administraiton Page | 2015-01-20 → 2015-02-03 A (+14d) | 2015-01-26 → 2015-02-10 (+15d) | 5d → 6d | 0% → 75% |  |  |
| 27 | **data input page** | 2015-02-09 → 2015-02-03 (-6d) |  | 16d → 20d | 0% → 38% |  |  |
| 28 | Create Data input page | 2015-02-09 A | 2015-02-12 A |  | 0% → 100% |  |  |
| 29 | Create User Friendly Input fields | 2015-02-13 A |  |  | 0% → 50% |  |  |
| 30 | Test Category Data input | 2015-02-19 → 2015-01-20 (-30d) | 2015-02-24 → 2015-01-23 (-32d) |  |  | none → 19 |  |
| 31 | add batch import | 2015-02-25 A | 2015-03-02 A |  | 0% → 100% |  |  |
| 32 | Test batch import | 2015-02-25 → 2015-01-20 (-36d) | 2015-03-02 → 2015-01-23 (-38d) |  |  | none → 19 |  |
| 35 | Exception Handleing | 2015-02-13 A |  |  | 0% → 50% |  |  |
| 37 | **Add Permissions** |  |  |  |  |  | resources Colton → Todd |
| 38 | Define and set Admin permissions |  |  |  |  |  | resources Colton → Todd |
| 39 | Define and Set User Permission |  |  |  |  |  | resources Colton → Todd |

## Version 3 (saved 2015-02-10)

Note of the change: Merge pull request #23 from tlenhart/ProvoColton

Last finish 2015-04-29 → 2015-04-24 (-5d). Complete tasks 23 → 24.

Added:

| ID | Task | Duration | Start | Finish | Resources |
| --- | --- | --- | --- | --- | --- |
| 27 | **Migrate Libraries** | 1d | 2015-02-10 | 2015-02-10 | Todd |
| 28 | BootStrap / Angular / Jquery charts | 1d | 2015-02-10 | 2015-02-10 | Todd |
| 44 | sub-category descriptions | 5d | 2015-03-04 | 2015-03-10 | Colton |
| 46 | Clean up HTML and CSS issues | 5d | 2015-03-16 | 2015-03-20 | Ikani |
| 47 | **Unit Testing** | 7d | 2015-03-17 | 2015-03-25 | Colton; Todd; Sam; Ikani |
| 48 | Write Test Plan | 3d | 2015-03-17 | 2015-03-19 | Todd; Sam; Ikani |
| 55 | Focus Group Testing | 10d | 2015-03-21 | 2015-04-02 | Colton |
| 56 | City Member Feedback | 10d | 2015-03-21 | 2015-04-02 | Colton |
| 60 | Write Documentation | 1d? | 2015-01-08 | 2015-01-08 |  |

Removed: 41 Create new pages from categories; 46 Create Category Page

Changed:

| ID | Task | Start | Finish | Duration | Complete | Predecessors | Other |
| --- | --- | --- | --- | --- | --- | --- | --- |
| 17 | **Update Dashboard Layout** |  |  |  |  |  | was named update dashboard page layout |
| 22 | **Change Main Categories** |  |  |  |  |  | was named change categories |
| 24 | **Data base sub-categories** |  |  |  |  |  | was named Data base categories |
| 25 | Dynamic addition of sub-categories |  |  |  |  |  | was named Dynamic Scripting of categories |
| 26 | sub-category data input | 2015-01-20 A | 2015-01-23 → 2015-01-28 (+5d) | 4d → 7d | 0% → 75% | 19 → none | was named Test Category Data input; resources Sam → Colton; Ikani |
| 29 | **Data input page** | 2015-02-03 A | 2015-03-02 → 2015-02-20 (-10d) | 20d → 14d | 38% → 81% |  | was named data input page |
| 31 | Save to DB |  | 2015-02-18 → 2015-02-16 (-2d) | 4d → 2d | 50% → 25% |  | was named Create User Friendly Input fields |
| 32 | Add batch import | 2015-02-25 A → 2015-02-10 A (-15d) | 2015-03-02 A → 2015-02-11 A (-19d) | 4d → 2d |  |  | was named add batch import |
| 33 | **sub-category page layouts and template** | 2015-01-21 → 2015-02-10 (+20d) | 2015-02-09 → 2015-02-18 (+9d) | 14d → 7d |  | 17 → none | was named drill down page layouts and template; resources Todd → Ikani |
| 34 | Create sub-category pages | 2015-01-21 → 2015-02-12 (+22d) | 2015-02-09 → 2015-02-16 (+7d) | 14d → 3d |  | 17 → none | was named sub category pages; resources Sam → Ikani |
| 35 | Attach graphs to sub-categories | 2015-01-28 → 2015-02-16 (+19d) | 2015-02-03 → 2015-02-18 (+15d) | 5d → 3d |  |  | was named Attach graphs based on feedback; resources Sam → Ikani |
| 36 | **Add Permissions** |  | 2015-02-24 → 2015-02-27 (+3d) | 11d → 14d | 0% → 50% | 23 → none |  |
| 37 | Create Administration Page |  | 2015-02-10 A |  | 75% → 100% |  | was named Create Administraiton Page |
| 38 | Define and set Admin permissions |  | 2015-02-18 → 2015-02-12 (-6d) | 7d → 3d |  |  |  |
| 39 | Define and Set User Permission | 2015-02-17 → 2015-02-10 (-7d) | 2015-02-23 → 2015-02-12 (-11d) | 5d → 3d |  |  |  |
| 40 | WATER LINE | 2015-01-08 A → 2015-01-06 A (-2d) | 2015-01-08 → 2015-03-01 (+52d) | 1d → 40d |  |  |  |
| 41 | **Create Concrete Category and Graphs** |  | 2015-04-06 → 2015-03-25 (-12d) | 28d → 20d |  |  | was named Create New Category and Graphs |
| 42 | create concrete sub-categories in database | 2015-03-13 → 2015-02-26 (-15d) | 2015-03-23 → 2015-03-04 (-19d) | 7d → 5d |  | 43 → none | was named create category in database |
| 43 | data input for new category |  | 2015-03-12 → 2015-03-10 (-2d) | 7d → 5d |  | Create Category Page → none |  |
| 45 | render new category graphs and pages | 2015-03-24 → 2015-03-10 (-14d) | 2015-04-01 → 2015-03-16 (-16d) | 7d → 5d |  | 42 → none |  |
| 49 | Data Validation | 2015-02-25 → 2015-03-21 (+24d) | 2015-03-02 → 2015-03-23 (+21d) | 4d → 2d |  |  |  |
| 50 | SQL Injection checks | 2015-02-19 → 2015-03-21 (+30d) | 2015-02-24 → 2015-03-23 (+27d) | 4d → 2d |  |  |  |
| 51 | Test batch import | 2015-01-20 → 2015-03-21 (+60d) | 2015-01-23 → 2015-03-23 (+59d) | 4d → 2d |  | 19 → none |  |
| 52 | Test custom date ranges | 2015-02-03 → 2015-03-21 (+46d) | 2015-02-09 → 2015-03-23 (+42d) | 5d → 2d |  |  |  |
| 53 | Exception Handleing | 2015-02-13 A → 2015-03-28 A (+43d) | 2015-02-18 → 2015-04-01 (+42d) |  |  |  |  |
| 54 | **User Testing** | 2015-04-16 → 2015-04-03 (-13d) | 2015-04-29 → 2015-04-16 (-13d) |  |  |  |  |
| 57 | **Improvements based on feedback** | 2015-02-26 → 2015-04-16 (+49d) | 2015-03-26 → 2015-04-24 (+29d) | 21d → 7d |  |  | was named improve admin page |
| 58 | admin styling | 2015-03-30 → 2015-04-16 (+17d) | 2015-04-16 → 2015-04-24 (+8d) | 14d → 7d |  |  |  |
| 59 | Improve input interface | 2015-03-30 → 2015-04-16 (+17d) | 2015-04-16 → 2015-04-24 (+8d) | 14d → 7d |  |  | was named improve input interface; resources Colton → Todd |

## Version 4 (saved 2015-03-31)

Note of the change: Added Boolean Visibility Value

Last finish stays 2015-04-24. Complete tasks 24 → 38.

Added:

| ID | Task | Duration | Start | Finish | Resources |
| --- | --- | --- | --- | --- | --- |
| 47 | Modals to have custom date range | 2d | 2015-04-01 | 2015-04-02 | Todd; Ikani; Colton; Sam |
| 48 | Visible / Invisible Java Code | 2d | 2015-04-01 | 2015-04-02 | Ikani; Colton; Sam; Todd |
| 49 | Visible / Invisible Button | 2d | 2015-04-01 | 2015-04-02 | Ikani; Colton; Sam; Todd |
| 64 | Server / Software documentation | 14d | 2015-03-23 A | 2015-04-09 | Todd |
| 65 | User Documentation | 14d | 2015-03-23 | 2015-04-09 | Sam; Colton |
| 66 | Training Provo City | 1d? | 2015-01-08 | 2015-01-08 |  |
| 67 | Project Handoff | 1d? | 2015-01-08 | 2015-01-08 |  |
| 68 | Server Implemenation Suggestions | 1d? | 2015-01-08 | 2015-01-08 |  |

Changed:

| ID | Task | Start | Finish | Duration | Complete | Predecessors | Other |
| --- | --- | --- | --- | --- | --- | --- | --- |
| 1 | Access to Server | 2015-01-08 A → 2014-10-06 A (-94d) | 2015-01-08 A → 2014-10-06 A (-94d) |  |  |  |  |
| 24 | **Data base sub-categories** |  | 2015-02-03 A |  | 75% → 100% |  |  |
| 25 | Dynamic addition of sub-categories |  | 2015-02-02 A |  | 75% → 100% |  |  |
| 26 | sub-category data input |  | 2015-01-28 A |  | 75% → 100% |  |  |
| 27 | **Migrate Libraries** | 2015-02-10 A | 2015-02-10 A |  | 0% → 100% |  |  |
| 28 | BootStrap / Angular / Jquery charts | 2015-02-10 A | 2015-02-10 A |  | 0% → 100% |  |  |
| 29 | **Data input page** |  | 2015-02-20 A |  | 81% → 100% |  |  |
| 31 | Save to DB |  | 2015-02-16 A |  | 25% → 100% |  |  |
| 33 | **sub-category page layouts and template** | 2015-02-10 A | 2015-02-18 A |  | 0% → 100% |  |  |
| 34 | Create sub-category pages | 2015-02-12 A | 2015-02-16 A |  | 0% → 100% |  |  |
| 35 | Attach graphs to sub-categories | 2015-02-16 A | 2015-02-18 A |  | 0% → 100% |  |  |
| 36 | **Add Permissions** |  | 2015-02-27 A |  | 50% → 100% |  |  |
| 38 | Define and set Admin permissions | 2015-02-10 A | 2015-02-12 A |  | 0% → 100% |  |  |
| 39 | Define and Set User Permission | 2015-02-10 A | 2015-02-12 A |  | 0% → 100% |  |  |
| 41 | **Create Concrete Category and Graphs** | 2015-02-26 A | 2015-03-25 A |  | 0% → 100% |  |  |
| 42 | create concrete sub-categories in database | 2015-02-26 A | 2015-03-04 A |  | 0% → 100% |  |  |
| 43 | data input for new category | 2015-03-04 A | 2015-03-10 A |  | 0% → 100% |  |  |
| 44 | sub-category descriptions | 2015-03-04 A | 2015-03-10 A |  | 0% → 100% |  |  |
| 45 | render new category graphs and pages | 2015-03-10 A | 2015-03-16 A |  | 0% → 100% |  |  |
| 46 | Clean up HTML and CSS issues | 2015-03-16 A | 2015-03-20 A |  | 0% → 100% |  |  |
| 50 | **Unit Testing** | 2015-03-17 A | 2015-03-25 → 2015-04-01 (+7d) | 7d → 12d | 0% → 47% | none → 25, 26, 27, 28 |  |
| 51 | Write Test Plan | 2015-03-17 A | 2015-03-19 A |  | 0% → 100% |  |  |
| 52 | Data Validation | 2015-03-21 A |  |  | 0% → 75% |  |  |
| 54 | Test batch import | 2015-03-21 → 2015-03-24 A (+3d) | 2015-03-23 → 2015-03-27 (+4d) | 2d → 4d | 0% → 38% | none → 21 |  |
| 57 | **User Testing** | 2015-04-03 → 2015-04-07 (+4d) | 2015-04-16 → 2015-04-20 (+4d) |  |  |  |  |
| 58 | Focus Group Testing | 2015-03-21 → 2015-04-07 (+17d) | 2015-04-02 → 2015-04-20 (+18d) |  |  |  |  |
| 59 | City Member Feedback / Security Check | 2015-03-21 → 2015-04-07 (+17d) | 2015-04-02 → 2015-04-20 (+18d) |  |  |  | was named City Member Feedback |
| 63 | **Write Documentation** | 2015-01-08 → 2015-03-23 A (+74d) | 2015-01-08 → 2015-04-09 (+91d) | 1d? → 14d | 0% → 25% |  | resources none → Sam; Colton; Todd |
